# CityNexus 软件工程 2026 · 课堂甘特图（同一份 65 行计划的视图）

How a schedule from MS Project changed from version to version. A marks actual dates.

## Version 1 (data date 2026-10-22, saved 2026-10-25)

Note of the change: coursework(R4-1): a classroom Gantt built from the full 65-row plan, not a new one

| ID | WBS | Task | Duration | Start | Finish | Predecessors | Complete | Total float |
| --- | --- | --- | --- | --- | --- | --- | --- | --- |
| 1 | 1 | **选题与立项** | 3d | 2026-09-07 A | 2026-09-09 A |  | 100% |  |
| 2 |  | 1.1 Read the assignment brief and fix the deliverable scope | 1d | 2026-09-07 A | 2026-09-07 A |  | 100% |  |
| 3 |  | 1.2 Select the project: smart city traveler system | 1d | 2026-09-08 A | 2026-09-08 A | 2 | 100% |  |
| 4 |  | 1.3 Confirm the group of three and each member's responsibility | 2d | 2026-09-08 A | 2026-09-09 A | 3SS | 100% |  |
| 5 |  | M1 Topic and scope agreed | 0d | 2026-09-08 A | 2026-09-08 A | 3 | 100% |  |
| 6 | 2 | **需求工程** | 31d | 2026-09-09 A | 2026-10-21 |  | 81% | 2d |
| 7 |  | 2.1 Research the software needed, library and online | 4d | 2026-09-09 A | 2026-09-14 A | 5 | 100% |  |
| 8 |  | 2.2 Write the requirement baseline: 8 goals, 61 functional, 24 rules, 16 NFR, 14 security, 15 integration | 5d | 2026-09-09 A | 2026-09-15 A | 7SS | 100% |  |
| 9 |  | 2.3 Domain model and use case specification | 4d | 2026-09-09 A | 2026-09-14 A | 8SS | 100% |  |
| 10 |  | M2 Requirements baseline drafted | 0d | 2026-09-15 A | 2026-09-15 A | 8, 9 | 100% |  |
| 11 |  | 2.4 Get the requirement baseline agreed with the teacher as customer | 3d | 2026-10-19 | 2026-10-21 | 60 |  | 2d |
| 12 | 3 | **系统设计与架构** | 5d | 2026-09-16 A | 2026-09-22 A |  | 100% |  |
| 13 |  | 3.1 Layered architecture and agent runtime design | 5d | 2026-09-16 A | 2026-09-22 A | 10 | 100% |  |
| 14 |  | 3.2 Interface contracts: OpenAPI and tool catalogues | 4d | 2026-09-16 A | 2026-09-21 A | 13SS | 100% |  |
| 15 |  | 3.3 Microsoft Visio system model for the report | 4d | 2026-09-16 A | 2026-09-21 A | 14SS | 100% |  |
| 16 |  | M3 Architecture design complete | 0d | 2026-09-22 A | 2026-09-22 A | 13, 14, 15 | 100% |  |
| 17 | 4 | **后端平台与数据层** | 28d | 2026-09-16 A | 2026-10-23 |  | 83% | 0d |
| 18 |  | 4.1 FastAPI service and the /api/v1 surface | 10d | 2026-09-16 A | 2026-09-29 A | 13SS | 100% |  |
| 19 |  | 4.2 SQLAlchemy schema, 60 tables, idempotency and audit | 8d | 2026-09-16 A | 2026-09-25 A | 18SS | 100% |  |
| 20 |  | 4.3 Journey lifecycle, plan generation and replanning | 12d | 2026-09-16 A | 2026-10-01 A | 18SS | 100% |  |
| 21 |  | 4.4 Twin, capability and preference scopes | 6d | 2026-09-28 A | 2026-10-05 A | 19 | 100% |  |
| 22 |  | 4.5 Commerce, guardian and autopilot | 14d | 2026-10-06 A | 2026-10-23 | 21 | 40% | 0d |
| 23 |  | M4 Core backend running end to end | 0d | 2026-10-05 A | 2026-10-05 A | 20, 21 | 100% |  |
| 24 | 5 | **地图与地点数据接入** | 9d | 2026-09-16 A | 2026-09-28 |  | 69% | 19d |
| 25 |  | 5.1 Geocoding and POI: Photon, Nominatim, Overpass | 5d | 2026-09-16 A | 2026-09-22 A | 18SS | 100% |  |
| 26 |  | 5.2 Context providers: Open-Meteo weather and time | 3d | 2026-09-16 A | 2026-09-18 | 25SS | 70% | 25d |
| 27 |  | 5.3 Mobility: Valhalla routing behind a live URL | 4d | 2026-09-16 | 2026-09-21 | 26SS |  | 24d |
| 28 |  | 5.4 Deterministic mock provider set as the shipped default | 4d | 2026-09-23 A | 2026-09-28 A | 25 | 100% |  |
| 29 |  | M5 Provider mesh integrated behind one interface | 0d | 2026-09-28 A | 2026-09-28 A | 26, 28 | 100% |  |
| 30 | 6 | **AI Agent 与 Hermes 能力** | 16d | 2026-09-16 A | 2026-10-07 |  | 82% | 12d |
| 31 |  | 6.1 Intent classification and trusted context assembly | 5d | 2026-09-16 A | 2026-09-22 A | 20SS | 100% |  |
| 32 |  | 6.2 Mission compile, mission plan and the twelve-step tool loop | 6d | 2026-09-23 A | 2026-09-30 A | 31 | 100% |  |
| 33 |  | 6.3 Tool gateway: allowlist, audit, idempotency, authorization | 5d | 2026-09-23 A | 2026-09-29 A | 32SS | 100% |  |
| 34 |  | 6.4 Eleven tools and the MCP V1 / V2 surfaces | 4d | 2026-09-30 A | 2026-10-05 A | 33 | 100% |  |
| 35 |  | 6.5 Native Hermes runtime | 6d | 2026-09-30 A | 2026-10-07 | 34SS | 20% | 12d |
| 36 |  | M6 Agent surface proven against a live model | 0d | 2026-10-05 A | 2026-10-05 A | 34 | 100% |  |
| 37 | 7 | **前端界面与交互** | 12d | 2026-09-16 A | 2026-10-01 A |  | 100% |  |
| 38 |  | 7.1 V8Experience shell and the fifteen routed panels | 8d | 2026-09-16 A | 2026-09-25 A | 18SS | 100% |  |
| 39 |  | 7.2 MapLibre map, plan comparison and Trip Studio | 6d | 2026-09-16 A | 2026-09-23 A | 38SS | 100% |  |
| 40 |  | 7.3 Copilot dock, agent rail, check-ins and collections | 6d | 2026-09-24 A | 2026-10-01 A | 39 | 100% |  |
| 41 |  | M7 Frontend running against the real backend | 0d | 2026-10-01 A | 2026-10-01 A | 40 | 100% |  |
| 42 | 8 | **集成与联调** | 6d | 2026-09-16 A | 2026-09-23 |  | 75% | 22d |
| 43 |  | 8.1 Authoritative integration line and landing gate | 6d | 2026-09-16 A | 2026-09-23 A | 39SS | 100% |  |
| 44 |  | 8.2 Backport the frontend onto the current capability contract | 6d | 2026-09-16 A | 2026-09-23 | 43SS | 50% | 22d |
| 45 |  | M8 Integration line stable | 0d | 2026-09-23 A | 2026-09-23 A | 43 | 100% |  |
| 46 | 9 | **验证与缺陷管理** | 20d | 2026-09-24 A | 2026-10-21 |  | 58% | 2d |
| 47 |  | 9.1 Backend regression suite | 20d | 2026-09-24 A | 2026-10-21 | 45SS | 85% | 2d |
| 48 |  | 9.2 Frontend end-to-end suite | 20d | 2026-09-24 A | 2026-10-21 | 47SS | 60% | 2d |
| 49 |  | 9.3 Close the four P0 defects from the bug report | 5d | 2026-09-24 A | 2026-09-30 | 48SS | 50% | 13d |
| 50 |  | 9.4 Physical phone and PWA shadow trial | 4d | 2026-10-01 | 2026-10-06 | 49 |  | 13d |
| 51 |  | 9.5 Verification evidence pack and defect triage report | 3d | 2026-10-19 | 2026-10-21 | 47FF, 48FF |  | 2d |
| 52 |  | 9.6 Final regression re-run and defect count for the report | 2d | 2026-10-01 | 2026-10-02 | 50SS |  | 15d |
| 53 |  | M9 系统测试就绪（计划 10-06，期限 11-02） | 0d | 2026-10-06 | 2026-10-06 | 50, 52 |  | 13d |
| 54 | 10 | **课程交付物与汇报** | 23d | 2026-09-23 A | 2026-10-23 |  | 52% | 0d |
| 55 |  | 10.1 Part 1: ten-slide report with the Visio model and task allocation | 5d | 2026-09-23 | 2026-09-29 | 16 |  | 2d |
| 56 |  | 10.2 Mid-term review pack: architecture, journey, agent loop, use cases | 11d | 2026-10-02 A | 2026-10-16 | 41 | 70% | 2d |
| 57 |  | 10.3 Part 2: project plan with WBS, links, resources and costs | 4d | 2026-10-19 A | 2026-10-22 | 56 | 80% | 1d |
| 58 |  | 10.4 Part 2: detailed requirement specification write-up | 5d | 2026-10-19 A | 2026-10-23 | 57SS | 40% | 0d |
| 59 |  | M10 Part1 合同截止 10-02（提交记录待平台确认） | 0d | 2026-09-29 | 2026-09-29 | 55 |  | 2d |
| 60 |  | M11 10-23 师生会面（是否已举行待确认） | 0d | 2026-10-16 | 2026-10-16 | 56 |  | 2d |
| 61 |  | M12 Part2 合同截止 11-06 | 0d | 2026-10-23 | 2026-10-23 | 58 |  | 0d |
| 62 | 11 | **最终验收、文档与交付** | 5d | 2026-10-19 A | 2026-10-23 |  | 75% | 0d |
| 63 |  | 11.1 Evidence pack: source mapping and automation verification | 1d | 2026-10-19 A | 2026-10-19 A | 56 | 100% |  |
| 64 |  | 11.2 Publish the deliverables to the repository | 1d | 2026-10-20 A | 2026-10-20 | 63 | 50% | 3d |
| 65 |  | M13 课程交付完成（计划 10-23） | 0d | 2026-10-23 | 2026-10-23 | 64, 61 |  | 0d |

## Version 2 (data date 2026-10-22, saved 2026-10-25)

Note of the change: coursework(R4-1): every date now wraps in full, and the milestones speak Chinese

Last finish stays 2026-10-23.

Changed:

| ID | Task | Other |
| --- | --- | --- |
| 1 | **选题、立项与分工** | was named 选题与立项 |
| 5 | M1 选题与范围确认 | was named M1 Topic and scope agreed |
| 6 | **需求工程与基线** | was named 需求工程 |
| 10 | M2 需求基线草稿 | was named M2 Requirements baseline drafted |
| 16 | M3 架构设计完成 | was named M3 Architecture design complete |
| 23 | M4 后端主干跑通 | was named M4 Core backend running end to end |
| 29 | M5 供应商接齐 | was named M5 Provider mesh integrated behind one interface |
| 36 | M6 Agent 实测通过 | was named M6 Agent surface proven against a live model |
| 41 | M7 前端接通后端 | was named M7 Frontend running against the real backend |
| 42 | **集成、联调与归并** | was named 集成与联调 |
| 45 | M8 集成线稳定 | was named M8 Integration line stable |
| 53 | M9 系统测试就绪 | was named M9 系统测试就绪（计划 10-06，期限 11-02） |
| 59 | M10 10-02 待确认 | was named M10 Part1 合同截止 10-02（提交记录待平台确认） |
| 60 | M11 10-23 待确认 | was named M11 10-23 师生会面（是否已举行待确认） |
| 61 | M12 11-06 截止 | was named M12 Part2 合同截止 11-06 |
| 65 | M13 10-23 交付 | was named M13 课程交付完成（计划 10-23） |
