# CityNexus Software Engineering 2026 - Classroom Gantt (a view of the same 65-row plan)

How a schedule from MS Project changed from version to version. A marks actual dates.

## Version 1 (data date 2026-10-22, saved 2026-10-29)

Note of the change: coursework(R5): bilingual classroom set — notes off the projected page, EN twins of both Visio diagrams and of the R4 Gantt

| ID | WBS | Task | Duration | Start | Finish | Predecessors | Complete | Total float |
| --- | --- | --- | --- | --- | --- | --- | --- | --- |
| 1 | 1 | **1 Coursework initiation and project selection** | 3d | 2026-09-07 A | 2026-09-09 A |  | 100% |  |
| 2 |  | 1.1 Read the assignment brief and fix the deliverable scope | 1d | 2026-09-07 A | 2026-09-07 A |  | 100% |  |
| 3 |  | 1.2 Select the project: smart city traveler system | 1d | 2026-09-08 A | 2026-09-08 A | 2 | 100% |  |
| 4 |  | 1.3 Confirm the group of three and each member's responsibility | 2d | 2026-09-08 A | 2026-09-09 A | 3SS | 100% |  |
| 5 |  | M1 选题与范围确认 | 0d | 2026-09-08 A | 2026-09-08 A | 3 | 100% |  |
| 6 | 2 | **2 Requirements engineering** | 31d | 2026-09-09 A | 2026-10-21 |  | 81% | 2d |
| 7 |  | 2.1 Research the software needed, library and online | 4d | 2026-09-09 A | 2026-09-14 A | 5 | 100% |  |
| 8 |  | 2.2 Write the requirement baseline: 8 goals, 61 functional, 24 rules, 16 NFR, 14 security, 15 integration | 5d | 2026-09-09 A | 2026-09-15 A | 7SS | 100% |  |
| 9 |  | 2.3 Domain model and use case specification | 4d | 2026-09-09 A | 2026-09-14 A | 8SS | 100% |  |
| 10 |  | M2 需求基线草稿 | 0d | 2026-09-15 A | 2026-09-15 A | 8, 9 | 100% |  |
| 11 |  | 2.4 Get the requirement baseline agreed with the teacher as customer | 3d | 2026-10-19 | 2026-10-21 | 60 |  | 2d |
| 12 | 3 | **3 System design and architecture** | 5d | 2026-09-16 A | 2026-09-22 A |  | 100% |  |
| 13 |  | 3.1 Layered architecture and agent runtime design | 5d | 2026-09-16 A | 2026-09-22 A | 10 | 100% |  |
| 14 |  | 3.2 Interface contracts: OpenAPI and tool catalogues | 4d | 2026-09-16 A | 2026-09-21 A | 13SS | 100% |  |
| 15 |  | 3.3 Microsoft Visio system model for the report | 4d | 2026-09-16 A | 2026-09-21 A | 14SS | 100% |  |
| 16 |  | M3 架构设计完成 | 0d | 2026-09-22 A | 2026-09-22 A | 13, 14, 15 | 100% |  |
| 17 | 4 | **4 Backend platform and data layer** | 28d | 2026-09-16 A | 2026-10-23 |  | 83% | 0d |
| 18 |  | 4.1 FastAPI service and the /api/v1 surface | 10d | 2026-09-16 A | 2026-09-29 A | 13SS | 100% |  |
| 19 |  | 4.2 SQLAlchemy schema, 60 tables, idempotency and audit | 8d | 2026-09-16 A | 2026-09-25 A | 18SS | 100% |  |
| 20 |  | 4.3 Journey lifecycle, plan generation and replanning | 12d | 2026-09-16 A | 2026-10-01 A | 18SS | 100% |  |
| 21 |  | 4.4 Twin, capability and preference scopes | 6d | 2026-09-28 A | 2026-10-05 A | 19 | 100% |  |
| 22 |  | 4.5 Commerce, guardian and autopilot | 14d | 2026-10-06 A | 2026-10-23 | 21 | 40% | 0d |
| 23 |  | M4 后端主干跑通 | 0d | 2026-10-05 A | 2026-10-05 A | 20, 21 | 100% |  |
| 24 | 5 | **5 Map and place data integration** | 9d | 2026-09-16 A | 2026-09-28 |  | 69% | 19d |
| 25 |  | 5.1 Geocoding and POI: Photon, Nominatim, Overpass | 5d | 2026-09-16 A | 2026-09-22 A | 18SS | 100% |  |
| 26 |  | 5.2 Context providers: Open-Meteo weather and time | 3d | 2026-09-16 A | 2026-09-18 | 25SS | 70% | 25d |
| 27 |  | 5.3 Mobility: Valhalla routing behind a live URL | 4d | 2026-09-16 | 2026-09-21 | 26SS |  | 24d |
| 28 |  | 5.4 Deterministic mock provider set as the shipped default | 4d | 2026-09-23 A | 2026-09-28 A | 25 | 100% |  |
| 29 |  | M5 供应商接齐 | 0d | 2026-09-28 A | 2026-09-28 A | 26, 28 | 100% |  |
| 30 | 6 | **6 AI agent and Hermes capability** | 16d | 2026-09-16 A | 2026-10-07 |  | 82% | 12d |
| 31 |  | 6.1 Intent classification and trusted context assembly | 5d | 2026-09-16 A | 2026-09-22 A | 20SS | 100% |  |
| 32 |  | 6.2 Mission compile, mission plan and the twelve-step tool loop | 6d | 2026-09-23 A | 2026-09-30 A | 31 | 100% |  |
| 33 |  | 6.3 Tool gateway: allowlist, audit, idempotency, authorization | 5d | 2026-09-23 A | 2026-09-29 A | 32SS | 100% |  |
| 34 |  | 6.4 Eleven tools and the MCP V1 / V2 surfaces | 4d | 2026-09-30 A | 2026-10-05 A | 33 | 100% |  |
| 35 |  | 6.5 Native Hermes runtime | 6d | 2026-09-30 A | 2026-10-07 | 34SS | 20% | 12d |
| 36 |  | M6 Agent 实测通过 | 0d | 2026-10-05 A | 2026-10-05 A | 34 | 100% |  |
| 37 | 7 | **7 Frontend UI and interaction** | 12d | 2026-09-16 A | 2026-10-01 A |  | 100% |  |
| 38 |  | 7.1 V8Experience shell and the fifteen routed panels | 8d | 2026-09-16 A | 2026-09-25 A | 18SS | 100% |  |
| 39 |  | 7.2 MapLibre map, plan comparison and Trip Studio | 6d | 2026-09-16 A | 2026-09-23 A | 38SS | 100% |  |
| 40 |  | 7.3 Copilot dock, agent rail, check-ins and collections | 6d | 2026-09-24 A | 2026-10-01 A | 39 | 100% |  |
| 41 |  | M7 前端接通后端 | 0d | 2026-10-01 A | 2026-10-01 A | 40 | 100% |  |
| 42 | 8 | **8 Integration and consolidation** | 6d | 2026-09-16 A | 2026-09-23 |  | 75% | 22d |
| 43 |  | 8.1 Authoritative integration line and landing gate | 6d | 2026-09-16 A | 2026-09-23 A | 39SS | 100% |  |
| 44 |  | 8.2 Backport the frontend onto the current capability contract | 6d | 2026-09-16 A | 2026-09-23 | 43SS | 50% | 22d |
| 45 |  | M8 集成线稳定 | 0d | 2026-09-23 A | 2026-09-23 A | 43 | 100% |  |
| 46 | 9 | **9 Verification and defect management** | 20d | 2026-09-24 A | 2026-10-21 |  | 58% | 2d |
| 47 |  | 9.1 Backend regression suite | 20d | 2026-09-24 A | 2026-10-21 | 45SS | 85% | 2d |
| 48 |  | 9.2 Frontend end-to-end suite | 20d | 2026-09-24 A | 2026-10-21 | 47SS | 60% | 2d |
| 49 |  | 9.3 Close the four P0 defects from the bug report | 5d | 2026-09-24 A | 2026-09-30 | 48SS | 50% | 13d |
| 50 |  | 9.4 Physical phone and PWA shadow trial | 4d | 2026-10-01 | 2026-10-06 | 49 |  | 13d |
| 51 |  | 9.5 Verification evidence pack and defect triage report | 3d | 2026-10-19 | 2026-10-21 | 47FF, 48FF |  | 2d |
| 52 |  | 9.6 Final regression re-run and defect count for the report | 2d | 2026-10-01 | 2026-10-02 | 50SS |  | 15d |
| 53 |  | M9 System test ready (plan 10-06, deadline 11-02) | 0d | 2026-10-06 | 2026-10-06 | 50, 52 |  | 13d |
| 54 | 10 | **10 Coursework deliverables and reporting** | 23d | 2026-09-23 A | 2026-10-23 |  | 52% | 0d |
| 55 |  | 10.1 Part 1: ten-slide report with the Visio model and task allocation | 5d | 2026-09-23 | 2026-09-29 | 16 |  | 2d |
| 56 |  | 10.2 Mid-term review pack: architecture, journey, agent loop, use cases | 11d | 2026-10-02 A | 2026-10-16 | 41 | 70% | 2d |
| 57 |  | 10.3 Part 2: project plan with WBS, links, resources and costs | 4d | 2026-10-19 A | 2026-10-22 | 56 | 80% | 1d |
| 58 |  | 10.4 Part 2: detailed requirement specification write-up | 5d | 2026-10-19 A | 2026-10-23 | 57SS | 40% | 0d |
| 59 |  | M10 Part 1 contract deadline 10-02 (submission record pending platform confirmation) | 0d | 2026-09-29 | 2026-09-29 | 55 |  | 2d |
| 60 |  | M11 10-23 teacher-student meeting (held? unconfirmed) | 0d | 2026-10-16 | 2026-10-16 | 56 |  | 2d |
| 61 |  | M12 Part 2 contract deadline 11-06 | 0d | 2026-10-23 | 2026-10-23 | 58 |  | 0d |
| 62 | 11 | **11 Final acceptance, documentation and delivery** | 5d | 2026-10-19 A | 2026-10-23 |  | 75% | 0d |
| 63 |  | 11.1 Evidence pack: source mapping and automation verification | 1d | 2026-10-19 A | 2026-10-19 A | 56 | 100% |  |
| 64 |  | 11.2 Publish the deliverables to the repository | 1d | 2026-10-20 A | 2026-10-20 | 63 | 50% | 3d |
| 65 |  | M13 Course delivery complete (plan 10-23) | 0d | 2026-10-23 | 2026-10-23 | 64, 61 |  | 0d |

## Version 2 (data date 2026-10-22, saved 2026-10-29)

Note of the change: coursework(R7): the EN plan's own M1-M8 milestone names go English too (Chinese originals kept in row notes) — all 13 milestones now read in one language; expanded-view screenshot added

Last finish stays 2026-10-23.

Changed:

| ID | Task | Other |
| --- | --- | --- |
| 5 | M1 Topic and scope confirmed | was named M1 选题与范围确认 |
| 10 | M2 Requirements baseline draft | was named M2 需求基线草稿 |
| 16 | M3 Architecture design complete | was named M3 架构设计完成 |
| 23 | M4 Backend trunk running end to end | was named M4 后端主干跑通 |
| 29 | M5 Providers integrated | was named M5 供应商接齐 |
| 36 | M6 Agent verified in the field | was named M6 Agent 实测通过 |
| 41 | M7 Frontend wired to the backend | was named M7 前端接通后端 |
| 45 | M8 Integration line stable | was named M8 集成线稳定 |
